# Cronograma

Schedule from MS Project, 2024-06-20 to 2024-09-19, costs in $.

## Calendars

- Estándar: Mon-Fri 09:00-13:00, 15:00-19:00; Sat-Sun off.

## Resources

| Resource | Rate | Cost per use |
| --- | --- | --- |
| Lider de Proyecto | 5 |  |
| Desarrollador/Analista 1 | 4.38 |  |
| Desarrollador/Analista 2 | 4.38 |  |
| Lapto 1 | 0.31 |  |
| Lapto 2 | 0.31 |  |
| Lapto 3 | 0.31 |  |
| Papeleria | 4 | 4 |
| Impresoras Tintas | 27 | 27 |
| Licencias Software |  |  |
| Materiales de Invesigacion y capacitacion | 250 |  |
| Lapto 4 Contingencia | 0.31 |  |

## Schedule

| ID | WBS | Task | Duration | Start | Finish | Predecessors | Total slack | Free slack | Constraint | Resources | Work | Cost |
| --- | --- | --- | --- | --- | --- | --- | --- | --- | --- | --- | --- | --- |
| 1 | 1 | **Aplicación móvil para la gestión de parqueaderos en la Universidad Autónoma de Los Andes, mediante la lectura de credenciales institucionales.** | 66d | 2024-06-20 | 2024-09-19 |  | 0d |  |  |  | 1376h | 5,140 |
| 2 | 1.1 | **INICIACIÓN** | 5d | 2024-06-20 | 2024-06-26 |  | 16d | 2d |  |  | 48h | 241.5 |
| 3 | 1.1.1 | Designacion del equipo | 1d | 2024-06-20 | 2024-06-20 |  | 16d | 0d | finish no earlier than 2024-06-20 | Impresoras Tintas; Papeleria |  | 62 |
| 4 | 1.1.2 | Analisis de Softwares a utilizar. | 2d | 2024-06-21 | 2024-06-24 | 3 | 16d | 0d | start no earlier than 2024-06-21 | Lider de Proyecto [50%]; Lapto 1 [50%]; Impresoras Tintas; Papeleria; Licencias Software [0.1%] | 16h | 104.5 |
| 5 | 1.1.3 | Estudio de Factivilidad. | 2d | 2024-06-25 | 2024-06-26 | 4 | 16d |  | start no earlier than 2024-06-25 | Desarrollador/Analista 1; Lapto 2 | 32h | 75 |
| 6 | 1.2 | **PLANIFICACIÓN** | 8d | 2024-07-01 | 2024-07-10 |  | 14d | 0d |  | Materiales de Invesigacion y capacitacion; Papeleria | 128h | 600.5 |
| 7 | 1.2.1 | Levantamiento de Requerimientos Base | 2d | 2024-07-01 | 2024-07-02 | 2, 3, 4 | 14d | 0d | start no earlier than 2024-07-01 | Desarrollador/Analista 2 | 16h | 70 |
| 8 | 1.2.2 | Metodología de Desarrollo | 3d | 2024-07-03 | 2024-07-05 | 7 | 14d | 0d | start no earlier than 2024-07-02 | Desarrollador/Analista 2; Lapto 2 | 48h | 112.5 |
| 9 | 1.2.3 | Plan de trabajo | 1d | 2024-07-08 | 2024-07-08 | 8 | 14d | 0d | start no earlier than 2024-07-03 | Lapto 1; Lider de Proyecto | 16h | 42.5 |
| 10 | 1.2.4 | Plan de financiación | 1d | 2024-07-09 | 2024-07-09 | 9 | 15d |  | start no earlier than 2024-07-04 | Lapto 1; Lider de Proyecto | 16h | 42.5 |
| 11 | 1.2.5 | Plan de gestión de riesgos | 2d | 2024-07-09 | 2024-07-10 | 9 | 14d |  | start no earlier than 2024-07-05 | Desarrollador/Analista 2; Lapto 2 | 32h | 75 |
| 12 | 1.3 | **DEFINICIÓN DE REQUISITOS** | 8d | 2024-07-11 | 2024-07-22 |  |  |  |  | Impresoras Tintas; Papeleria | 144h | 414.5 |
| 13 | 1.3.1 | Requerimientos funcionales | 2d | 2024-07-11 | 2024-07-12 | 6, 7 | 14d | 0d |  | Desarrollador/Analista 2; Lapto 2 | 32h | 75 |
| 14 | 1.3.2 | Requerimientos no funcionales | 2d | 2024-07-15 | 2024-07-16 | 13 | 14d | 0d | start no earlier than 2024-07-08 | Desarrollador/Analista 1; Lapto 3 | 32h | 75 |
| 15 | 1.3.3 | Diagramas de Casos Uso | 3d | 2024-07-17 | 2024-07-19 | 13, 14 | 14d | 5d | start no earlier than 2024-07-09 | Lider de Proyecto; Lapto 4 Contingencia | 48h | 127.5 |
| 16 | 1.3.4 | Diagramas de Pert Gantt | 2d | 2024-07-17 | 2024-07-18 | 13, 14 | 15d | 6d | start no earlier than 2024-07-10 | Desarrollador/Analista 2; Lapto 2 | 32h | 75 |
| 17 | 1.4 | **DISEÑO** | 11d | 2024-07-29 | 2024-08-12 |  | 3d | 0d |  | Materiales de Invesigacion y capacitacion; Papeleria; Impresoras Tintas | 160h | 734.5 |
| 18 | 1.4.1 | Diagramas de casos de uso y Uml | 3d | 2024-07-29 | 2024-07-31 | 14, 15, 16 | 9d | 6d | start no earlier than 2024-07-29 | Desarrollador/Analista 1; Lapto 1 | 48h | 112.5 |
| 19 | 1.4.2 | Diseño de base de datos | 3d | 2024-08-01 | 2024-08-05 | 14, 15, 16 | 6d | 3d | start no earlier than 2024-08-01 | Desarrollador/Analista 2; Lapto 2 | 48h | 112.5 |
| 20 | 1.4.3 | Diseño de interfaz | 3d | 2024-08-06 | 2024-08-08 | 14, 15, 16 | 3d | 0d | start no earlier than 2024-08-06 | Lapto 1; Lider de Proyecto | 48h | 127.5 |
| 21 | 1.4.4 | Arquitectura del sistema | 2d | 2024-08-09 | 2024-08-12 | 18, 19, 20 | 3d |  | start no earlier than 2024-08-08 | Desarrollador/Analista 1 | 16h | 70 |
| 22 | 1.5 | **DESARROLLO** | 11d | 2024-08-13 | 2024-08-27 |  | 2d | 0d |  | Impresoras Tintas; Papeleria | 416h | 1,087 |
| 23 | 1.5.1 | Desarrollo Base de datos | 4d | 2024-08-13 | 2024-08-16 | 17 | 3d | 0d | start no earlier than 2024-08-12 | Desarrollador/Analista 2; Lapto 1; Lapto 2; Lider de Proyecto | 128h | 320 |
| 24 | 1.5.2 | Desarrollo Codigo | 4d | 2024-08-19 | 2024-08-22 | 23 | 3d | 1d | start no earlier than 2024-08-19 | Desarrollador/Analista 1; Desarrollador/Analista 2; Lapto 1; Lapto 2; Lapto 3; Lider de Proyecto | 192h | 470 |
| 25 | 1.5.3 | Integración | 2d | 2024-08-26 | 2024-08-27 | 24 | 2d |  | start no earlier than 2024-08-26 | Desarrollador/Analista 1; Desarrollador/Analista 2; Lapto 1; Lapto 2; Lapto 3; Lider de Proyecto | 96h | 235 |

| ID | WBS | Task | Duration | Start | Finish | Predecessors | Total slack | Free slack | Constraint | Resources | Work | Cost |
| --- | --- | --- | --- | --- | --- | --- | --- | --- | --- | --- | --- | --- |
| 26 | 1.6 | **PRUEBAS** | 12d | 2024-08-28 | 2024-09-12 |  | 1d |  |  | Impresoras Tintas; Materiales de Invesigacion y capacitacion; Papeleria | 288h | 1,334 |
| 27 | 1.6.1 | Pruebas de usabilidad | 3d | 2024-08-28 | 2024-08-30 | 22 | 2d | 0d | start no earlier than 2024-08-26 | Desarrollador/Analista 2; Lapto 1; Lapto 2; Lider de Proyecto | 96h | 240 |
| 28 | 1.6.2 | Revision de Codigo Fuente | 4d | 2024-09-02 | 2024-09-05 | 27 | 2d | 1d | start no earlier than 2024-09-02 | Desarrollador/Analista 1; Lapto 1; Lapto 3; Lider de Proyecto | 128h | 320 |
| 29 | 1.6.3 | Implemetacion de Manuales de Usuario | 4d | 2024-09-09 | 2024-09-12 | 28 | 1d |  | start no earlier than 2024-09-09 | Desarrollador/Analista 2; Lapto 2; Impresoras Tintas; Materiales de Invesigacion y capacitacion; Papeleria | 64h | 462 |
| 30 | 1.7 | **IMPLEMENTACIÓN** | 4d | 2024-09-16 | 2024-09-19 | 26 | 0d |  |  |  | 192h | 728 |
| 31 | 1.7.1 | Capacitación de usuarios | 2d | 2024-09-16 | 2024-09-17 | 27, 28, 29 | 0d |  | start no earlier than 2024-09-16 | Desarrollador/Analista 1; Desarrollador/Analista 2; Lapto 1; Lapto 2; Lapto 3; Lider de Proyecto; Materiales de Invesigacion y capacitacion; Papeleria | 96h | 493 |
| 32 | 1.7.2 | Despliegue en Producción | 2d | 2024-09-18 | 2024-09-19 | 31 | 0d |  | start no earlier than 2024-09-17 | Desarrollador/Analista 1; Desarrollador/Analista 2; Lapto 1; Lapto 2; Lapto 3; Lider de Proyecto | 96h | 235 |
